# airbnb_henrique_joao

Schedule from MS Project, 2018-11-26 to 2019-09-27.

## Calendars

- Standard: Mon-Fri 08:00-12:00, 13:00-17:00; Sat-Sun off. Exceptions (off unless hours are given): 2018-12-01 (Restauração da Independência), 2018-12-08 (Dia da Imaculada Conceição), 2018-12-24 to 2018-12-26 (Festividade Natalicia), 2019-01-01 to 2019-01-02 (Comemoração Ano Novo), 2019-04-19 (Sexta-Feira Santa), 2019-04-21 (Páscoa), 2019-04-25 to 2019-04-26 (Dia da Liberdade - 25 de Abril ( dia 26 oferecido)), 2019-05-01 (Dia do Trabalhador), 2019-06-10 (Dia de Portugal), 2019-06-20 (Corpo de Deus), 2019-08-15 (Assunção de Nossa Senhora).

## Schedule

| ID | WBS | Task | Duration | Start | Finish | Predecessors | Total slack |
| --- | --- | --- | --- | --- | --- | --- | --- |
| 1 | 1 | **Desenvolvimento da aplicação Airbnb** | 208d | 2018-11-26 | 2019-09-27 |  | 0d |
| 2 | 1.1 | **Definição do projeto a desenvolver** | 0.38d | 2018-11-26 | 2018-11-26 |  | 0d |
| 3 | 1.1.1 | Reunião com cliente | 3h | 2018-11-26 | 2018-11-26 |  | 0d |
| 4 | 1.2 | **Análise e compra de recursos** | 6d | 2018-11-26 | 2018-12-04 |  | 0d |
| 5 | 1.2.1 | Identificação de ferramentas e recursos | 2d | 2018-11-26 | 2018-11-28 | 3 | 0d |
| 6 | 1.2.2 | Escolha e compra de hardware | 2d | 2018-11-28 | 2018-11-30 | 5 | 203.62d |
| 7 | 1.2.3 | Escolha e compra de software | 2d | 2018-11-28 | 2018-11-30 | 5 | 203.62d |
| 8 | 1.2.4 | Arrendamento de escritório | 3d | 2018-11-28 | 2018-12-03 | 5 | 0d |
| 9 | 1.2.5 | Análise de custos | 1d | 2018-12-03 | 2018-12-04 | 8 | 0d |
| 10 | 1.3 | **Análise do sistema** | 24d | 2018-12-04 | 2019-01-14 |  | 0d |
| 11 | 1.3.1 | Estudo do estado da arte | 2d | 2018-12-04 | 2018-12-06 | 9 | 0d |
| 12 | 1.3.2 | Caracterização dos atores | 8d | 2018-12-06 | 2018-12-18 | 11 | 0d |
| 13 | 1.3.3 | Diagrama dos casos de uso | 7d | 2018-12-18 | 2019-01-03 | 12 | 0d |
| 14 | 1.3.4 | Requisistos funcionais e não funcionais | 7d | 2019-01-03 | 2019-01-14 | 13 | 0d |
| 15 | 1.4 | **Desenho do sistema** | 72.75d | 2019-01-14 | 2019-04-30 |  | 0d |
| 16 | 1.4.1 | **Modelação de interfaces** | 20d | 2019-01-14 | 2019-02-11 |  | 0d |
| 17 | 1.4.1.1 | Storyboard da navegação | 10d | 2019-01-14 | 2019-01-28 | 14 | 0d |
| 18 | 1.4.1.2 | Interfaces dos casos de uso | 10d | 2019-01-28 | 2019-02-11 | 17 | 0d |
| 19 | 1.4.2 | **Modelação da base de dados** | 20d | 2019-02-11 | 2019-03-11 |  | 0d |
| 20 | 1.4.2.1 | Diagrama E/R | 10d | 2019-02-11 | 2019-02-25 | 18 | 0d |
| 21 | 1.4.2.2 | Modelo físico | 10d | 2019-02-25 | 2019-03-11 | 20 | 0d |
| 22 | 1.4.3 | **Modelação UML** | 20d | 2019-03-11 | 2019-04-08 |  | 0d |
| 23 | 1.4.3.1 | Diagrama de classes | 10d | 2019-03-11 | 2019-03-25 | 21 | 0d |
| 24 | 1.4.3.2 | Diagramas de sequência | 10d | 2019-03-25 | 2019-04-08 | 23 | 0d |

| ID | WBS | Task | Duration | Start | Finish | Predecessors | Total slack |
| --- | --- | --- | --- | --- | --- | --- | --- |
| 25 | 1.4.4 | **Testes ao protótipo não funcional** | 12.75d | 2019-04-08 | 2019-04-30 |  | 0d |
| 26 | 1.4.4.1 | Planeamento dos testes | 3d | 2019-04-08 | 2019-04-11 | 24 | 0d |
| 27 | 1.4.4.2 | Execução dos testes | 5d | 2019-04-11 | 2019-04-18 | 26 | 0d |
| 28 | 1.4.4.3 | Análise de resultados | 2d | 2019-04-18 | 2019-04-23 | 27 | 0d |
| 29 | 1.4.4.4 | Propostas de redesenho | 2d | 2019-04-23 | 2019-04-29 | 28 | 0d |
| 30 | 1.4.4.5 | Apresentação do protótipo não funcional ao cliente | 3h | 2019-04-29 | 2019-04-29 | 29 | 0d |
| 31 | 1.4.4.6 | Propostas de redesenho por parte do cliente | 3h | 2019-04-29 | 2019-04-30 | 30 | 0d |
| 32 | 1.5 | **Desenvolvimento e testes** | 87d | 2019-04-30 | 2019-09-04 |  | 0d |
| 33 | 1.5.1 | Execução da base de dados | 10d | 2019-04-30 | 2019-05-15 | 31 | 94.88d |
| 34 | 1.5.2 | Desenvolvimento das interfaces | 10d | 2019-04-30 | 2019-05-15 | 31 | 0d |
| 35 | 1.5.3 | Teste às interfaces | 4d | 2019-05-15 | 2019-05-21 | 34 | 0d |
| 36 | 1.5.4 | Desenvolvimento da inserção de anúncios | 15d | 2019-05-21 | 2019-06-12 | 35 | 0d |
| 37 | 1.5.5 | Testes à inserção de anúncios | 3d | 2019-06-12 | 2019-06-17 | 36 | 0d |
| 38 | 1.5.6 | Desenvolvimento do arrendamento por parte dos utilizadores | 15d | 2019-06-17 | 2019-07-09 | 37 | 0d |
| 39 | 1.5.7 | Testes aos arrendamento | 3d | 2019-07-09 | 2019-07-12 | 38 | 0d |
| 40 | 1.5.8 | Desenvolvimento dos métodos de pagamento | 15d | 2019-07-12 | 2019-08-02 | 39 | 0d |
| 41 | 1.5.9 | Testes aos métodos de pagamento | 3d | 2019-08-02 | 2019-08-07 | 40 | 0d |
| 42 | 1.5.10 | Desenvolvimento de funções adicionais | 10d | 2019-08-07 | 2019-08-22 | 41 | 0d |
| 43 | 1.5.11 | Teste às funções adicionais | 3d | 2019-08-22 | 2019-08-27 | 42 | 0d |
| 44 | 1.5.12 | Agregação e implementação do software | 6d | 2019-08-27 | 2019-09-04 | 43 | 0d |
| 45 | 1.6 | **Controlo de qualidade** | 14d | 2019-09-04 | 2019-09-24 |  | 0d |
| 46 | 1.6.1 | Alpha testing | 4d | 2019-09-04 | 2019-09-10 | 44 | 0d |
| 47 | 1.6.2 | Correção de erros | 2d | 2019-09-10 | 2019-09-12 | 46 | 0d |
| 48 | 1.6.3 | Beta testing | 4d | 2019-09-12 | 2019-09-18 | 47 | 0d |
| 49 | 1.6.4 | Correções finais | 2d | 2019-09-18 | 2019-09-20 | 48 | 0d |
| 50 | 1.6.5 | Otimização do código | 2d | 2019-09-20 | 2019-09-24 | 49 | 0d |

| ID | WBS | Task | Type | Duration | Start | Finish | Predecessors | Total slack |
| --- | --- | --- | --- | --- | --- | --- | --- | --- |
| 51 | 1.7 | **Apresentação ao cliente** |  | 3.38d | 2019-09-24 | 2019-09-27 |  | 0d |
| 52 | 1.7.1 | Testes com o cliente |  | 3h | 2019-09-24 | 2019-09-24 | 50 | 0d |
| 53 | 1.7.2 | Refinamento final |  | 3d | 2019-09-24 | 2019-09-27 | 52 | 0d |
| 54 | 1.8 | **Análise global sobre o desenvolvimento da plataforma** |  | 0.5d | 2019-09-27 | 2019-09-27 |  | 0d |
| 55 | 1.8.1 | Relatório da performance da equipa comparativamente com o cumprimentos das datas estipuladas para cada fase |  | 2h | 2019-09-27 | 2019-09-27 | 53 | 0d |
| 56 | 1.8.2 | Relatório sobre os custos totais da aplicação |  | 2h | 2019-09-27 | 2019-09-27 | 55 | 0d |
| 57 | 1.9 | Lançamento da aplicação | milestone | 0d | 2019-09-27 | 2019-09-27 | 53 | 0.5d |
